Schedule from MS Project, 2024-02-09 to 2024-07-22, costs in р..

## Calendars

- Стандартный: Mon-Fri 09:00-13:00, 14:00-18:00; Sat-Sun off. Exceptions (off unless hours are given): 2024-03-07 09:00-13:00, 14:00-17:00 (Перед8 мрт, recurring), 2024-03-08 (День женщин, recurring), 2024-03-15 (День Конституции, recurring), 2024-04-30 09:00-13:00, 14:00-17:00 (перед трудом), 2024-05-01 (день труда), 2024-05-08 09:00-13:00, 14:00-17:00 (перед победой), 2024-05-09 (день победы).

## Resources

| Resource | Unit | Rate | Cost per use |
| --- | --- | --- | --- |
| Руководитель проекта |  | 15 | 850 |
| Веб-архитектор |  | 15 | 800 |
| Фронтенд-разработчик |  | 14 |  |
| Бэкенд-разработчик |  | 14 |  |
| Дизайнер |  | 12 |  |
| Бизнес-аналитик |  | 10 |  |
| Тест-инженер |  | 13 |  |
| Контент-менеджер |  | 8 |  |
| Картридж для принтера | шт | 50 |  |
| Бумага | шт | 14 |  |
| Покупка лицензии на ПО | шт | 120 |  |
| Услуги связи |  |  |  |
| Интернет |  |  |  |

## Schedule

| ID | WBS | Task | Type | Duration | Start | Finish | Predecessors | Total slack | Resources | Work | Cost |
| --- | --- | --- | --- | --- | --- | --- | --- | --- | --- | --- | --- |
| 1 | 1 | Начало проекта | milestone | 0d | 2024-02-09 | 2024-02-09 |  | 0d |  |  |  |
| 2 | 2 | **Анализ требований** |  | 24d | 2024-02-09 | 2024-03-18 |  | 0d |  | 304h | 11,502 |
| 3 | 2.1 | Встреча с заказчиком |  | 1d | 2024-02-09 | 2024-02-09 | 1 | 0d | Бизнес-аналитик; Дизайнер; Руководитель проекта; Веб-архитектор | 32h | 2,066 |
| 4 | 2.2 | Сбор информации |  | 9d | 2024-02-12 | 2024-02-22 | 3 | 102d | Бизнес-аналитик; Руководитель проекта; Дизайнер; Интернет [0.1%] | 144h | 2,646 |
| 5 | 2.3 | Написание документа требований |  | 2d | 2024-02-12 | 2024-02-13 | 3 | 0d | Руководитель проекта; Бизнес-аналитик | 32h | 1,250 |
| 6 | 2.4 | Обсуждение требований с заказчиком |  | 2d | 2024-02-14 | 2024-02-22 | 5 | 0d | Бизнес-аналитик; Руководитель проекта; Веб-архитектор; Дизайнер; Услуги связи [0.1%] | 32h | 2,086 |
| 7 | 2.5 | Корректировка требований |  | 2d | 2024-02-23 | 2024-02-27 | 6 | 0d | Руководитель проекта; Бизнес-аналитик | 16h | 1,050 |
| 8 | 2.6 | Подготовка договора и устава |  | 2d | 2024-02-23 | 2024-02-26 | 6 | 1d | Руководитель проекта; Картридж для принтера [1 шт]; Бумага [1 шт] | 16h | 1,154 |
| 9 | 2.7 | Согласование документов с заказчиком |  | 2d | 2024-02-28 | 2024-02-29 | 7, 8 | 0d | Руководитель проекта; Бизнес-аналитик | 32h | 1,250 |
| 10 | 2.8 | Анализ требований завершен |  | 9d | 2024-03-01 | 2024-03-18 | 9 | 0d |  |  |  |
| 11 | 3 | **Разработка ТЗ** |  | 20d | 2024-03-18 | 2024-04-15 |  | 0d |  | 216.8h | 7,801 |
| 12 | 3.1 | Определение структуры WEB-приложения |  | 7d | 2024-03-19 | 2024-03-28 | 10 | 0d | Веб-архитектор | 56h | 1,640 |
| 13 | 3.2 | Выбор технологий |  | 1d | 2024-03-18 | 2024-03-19 | 10 | 7d | Веб-архитектор [50%] | 4h | 460 |
| 14 | 3.3 | Разработка ТЗ |  | 4d | 2024-03-28 | 2024-04-03 | 12, 13 | 0d | Руководитель проекта; Бизнес-аналитик; Веб-архитектор; Бумага [1 шт] | 96h | 2,944 |
| 15 | 3.4 | Согласование ТЗ с заказчиком |  | 2d | 2024-04-03 | 2024-04-05 | 14 | 0d | Бизнес-аналитик [50%]; Руководитель проекта [50%] | 16h | 625 |
| 16 | 3.5 | Разработка ТЗ завершена | milestone | 0d | 2024-04-05 | 2024-04-05 | 15 | 0d |  |  |  |
| 17 | 3.6 | **Создание прототипа** |  | 6d | 2024-04-05 | 2024-04-15 |  | 0d |  | 44.8h | 2,132 |
| 18 | 3.6.1 | Создание прототипа |  | 4d | 2024-04-05 | 2024-04-11 | 16 | 0d | Веб-архитектор | 32h | 1,280 |
| 19 | 3.6.2 | Согласование с заказчиком |  | 2d | 2024-04-11 | 2024-04-15 | 18 | 0d | Веб-архитектор [40%]; Руководитель проекта [40%] | 12.8h | 852 |
| 20 | 3.6.3 | Создание прототипа завершено | milestone | 0d | 2024-04-15 | 2024-04-15 | 19 | 0d |  |  |  |
| 21 | 4 | **Разработка дизайна WEB-приложения** |  | 21d | 2024-04-15 | 2024-05-16 |  | 0d |  | 172.8h | 3,281.8 |
| 22 | 4.1 | Разработка макетов страниц |  | 12d | 2024-04-15 | 2024-05-02 | 20 | 0d | Дизайнер | 96h | 1,152 |
| 23 | 4.2 | Согласование макетов с заказчиком |  | 4d | 2024-05-02 | 2024-05-08 | 22 | 0d | Руководитель проекта; Дизайнер | 64h | 1,714 |
| 24 | 4.3 | Доработка макетов |  | 1d | 2024-05-08 | 2024-05-10 | 23 | 0d | Дизайнер | 8h | 96 |
| 25 | 4.4 | Утверждение окончательного варианта |  | 1d | 2024-05-15 | 2024-05-16 | 24FS+3d | 0d | Руководитель проекта [30%]; Дизайнер [30%] | 4.8h | 319.8 |
| 26 | 4.5 | Разработка дизайна завершена | milestone | 0d | 2024-05-16 | 2024-05-16 | 25 | 0d |  |  |  |

| ID | WBS | Task | Type | Duration | Start | Finish | Predecessors | Total slack | Resources | Work | Cost |
| --- | --- | --- | --- | --- | --- | --- | --- | --- | --- | --- | --- |
| 27 | 5 | **Верстка и программирование** |  | 29d | 2024-05-16 | 2024-06-26 |  | 0d |  | 371.2h | 5,138.8 |
| 28 | 5.1 | Разработка клиентской части |  | 16d | 2024-05-16 | 2024-06-07 | 26 | 0d | Фронтенд-разработчик | 128h | 1,792 |
| 29 | 5.2 | Разработка серверной части |  | 15d | 2024-05-16 | 2024-06-06 | 26 | 5d | Бэкенд-разработчик; Покупка лицензии на ПО [1 шт] | 120h | 1,800 |
| 30 | 5.3 | Подготовка контента и заполнение |  | 4d | 2024-06-07 | 2024-06-13 | 28 | 0d | Контент-менеджер | 32h | 256 |
| 31 | 5.4 | Тестирование |  | 2d | 2024-06-13 | 2024-06-17 | 29, 30 | 0d | Тест-инженер | 16h | 208 |
| 32 | 5.5 | Правка кода, устранение сбоев в работе |  | 4d | 2024-06-17 | 2024-06-21 | 31 | 0d | Фронтенд-разработчик [80%]; Бэкенд-разработчик [80%] | 51.2h | 716.8 |
| 33 | 5.6 | Интеграция с внешними системами и |  | 3d | 2024-06-21 | 2024-06-26 | 32 | 0d | Бэкенд-разработчик; Интернет [0.1%] | 24h | 366 |
| 34 | 5.7 | Верстка и программирование завершены | milestone | 0d | 2024-06-26 | 2024-06-26 | 33 | 0d |  |  |  |
| 35 | 6 | **Тестирование и отладка WEB-приложения** |  | 13d | 2024-06-26 | 2024-07-15 |  | 0d |  | 134.4h | 2,042 |
| 36 | 6.1 | Техническое тестирование |  | 2d | 2024-06-26 | 2024-06-28 | 34 | 0d | Тест-инженер | 16h | 208 |
| 37 | 6.2 | Тестирование на стороне заказчика |  | 4d | 2024-06-28 | 2024-07-04 | 36 | 0d | Руководитель проекта [20%] | 6.4h | 266 |
| 38 | 6.3 | Отладка |  | 7d | 2024-07-04 | 2024-07-15 | 37 | 0d | Фронтенд-разработчик; Бэкенд-разработчик | 112h | 1,568 |
| 39 | 6.4 | Тестирование и отладка завершены | milestone | 0d | 2024-07-15 | 2024-07-15 | 38 | 0d |  |  |  |
| 40 | 7 | **Внедрение** |  | 5d | 2024-07-15 | 2024-07-22 |  | 0d |  | 80h | 2,313 |
| 41 | 7.1 | Перенос на рабочий сервер |  | 2d | 2024-07-15 | 2024-07-17 | 39 | 1d | Бэкенд-разработчик | 16h | 224 |
| 42 | 7.2 | Формирование отчетности |  | 3d | 2024-07-15 | 2024-07-18 | 39 | 0d | Руководитель проекта; Бизнес-аналитик; Бумага [1 шт] | 48h | 1,464 |
| 43 | 7.3 | Передача WEB-приложения заказчику |  | 2d | 2024-07-18 | 2024-07-22 | 41, 42 | 0d | Руководитель проекта [50%]; Бизнес-аналитик [50%] | 16h | 625 |
| 44 | 7.4 | Внедрение завершено | milestone | 0d | 2024-07-22 | 2024-07-22 | 43 | 0d |  |  |  |
| 45 | 7.5 | Проект завершен | milestone | 0d | 2024-07-22 | 2024-07-22 | 44 | 0d |  |  |  |
