Schedule from MS Project, 2024-02-09 to 2024-07-31, costs in р., A marks actual dates.

## Calendars

- Стандартный: Mon-Fri 09:00-13:00, 14:00-18:00; Sat-Sun off. Exceptions (off unless hours are given): 2024-03-07 09:00-13:00, 14:00-17:00 (Перед8 мрт, recurring), 2024-03-08 (День женщин, recurring), 2024-03-15 (День Конституции, recurring), 2024-04-30 09:00-13:00, 14:00-17:00 (перед трудом), 2024-05-01 (день труда), 2024-05-08 09:00-13:00, 14:00-17:00 (перед победой), 2024-05-09 (день победы).

## Resources

| Resource | Unit | Rate | Cost per use |
| --- | --- | --- | --- |
| Руководитель проекта |  | 15 | 850 |
| Веб-архитектор |  | 15 | 800 |
| Фронтенд-разработчик |  | 14 |  |
| Бэкенд-разработчик |  | 14 |  |
| Дизайнер |  | 12 |  |
| Бизнес-аналитик |  | 10 |  |
| Тест-инженер |  | 13 |  |
| Контент-менеджер |  | 8 |  |
| Картридж для принтера | шт | 50 |  |
| Бумага | шт | 14 |  |
| Покупка лицензии на ПО | шт | 120 |  |
| Услуги связи |  |  |  |
| Интернет |  |  |  |

## Schedule

| ID | WBS | Task | Type | Duration | Start | Finish | Predecessors | Complete | Remaining | Baseline start | Baseline finish | Baseline duration | Total slack | Free slack | Constraint | Resources | Work | Actual work | Cost | Baseline cost | Actual cost |
| --- | --- | --- | --- | --- | --- | --- | --- | --- | --- | --- | --- | --- | --- | --- | --- | --- | --- | --- | --- | --- | --- |
| 1 | 1 | Начало проекта | milestone | 0d | 2024-02-09 | 2024-02-09 |  |  |  | 2024-02-09 | 2024-02-09 | 0d | 118.88d |  |  |  |  |  |  |  |  |
| 2 | 2 | **Анализ требований** |  | 31d | 2024-02-09 A | 2024-03-27 |  | 63% | 11.38d | 2024-02-09 | 2024-03-27 | 31d | 87.88d |  |  |  | 468h | 422h | 13,336.67 | 11,622 | 11,256.67 |
| 3 | 2.1 | Встреча с заказчиком |  | 1d | 2024-02-09 A | 2024-02-09 A | 1 | 100% |  | 2024-02-09 | 2024-02-09 | 1d |  |  |  | Бизнес-аналитик; Дизайнер; Руководитель проекта; Веб-архитектор | 32h | 32h | 2,066 | 2,066 | 2,066 |
| 4 | 2.2 | Сбор информации |  | 14.58d | 2024-02-12 A | 2024-03-01 | 3 | 86% | 2d | 2024-02-12 | 2024-02-19 | 6d | 102.88d |  |  | Бизнес-аналитик; Руководитель проекта; Дизайнер; Интернет [0.1%] | 302h | 282h | 4,714.67 | 2,646 | 4,374.67 |
| 5 | 2.3 | Написание документа требований |  | 5.75d | 2024-02-12 A | 2024-02-23 | 3 | 39% | 3.5d | 2024-02-12 | 2024-02-23 | 4d | 4.62d | 0d | start no earlier than 2024-02-12 | Руководитель проекта; Бизнес-аналитик [50%] | 32h | 16h | 1,260 | 1,330 | 160 |
| 6 | 2.4 | Обсуждение требований с заказчиком |  | 3d | 2024-02-26 A | 2024-03-01 | 5 | 96% | 0.12d | 2024-02-23 | 2024-03-01 | 3d | 102.88d |  | start no earlier than 2024-02-14 | Бизнес-аналитик [20%]; Руководитель проекта [50%]; Веб-архитектор; Дизайнер; Услуги связи [0.1%] | 34h | 24h | 1,736 | 2,126 | 1,096 |
| 7 | 2.5 | Корректировка требований |  | 1d | 2024-03-04 A | 2024-03-04 A | 6 | 100% |  | 2024-03-04 | 2024-03-04 | 1d |  |  |  | Руководитель проекта; Бизнес-аналитик | 16h | 16h | 1,050 | 1,050 | 1,050 |
| 8 | 2.6 | Подготовка договора и устава |  | 2.5d | 2024-03-04 A | 2024-03-07 A | 6 | 100% |  | 2024-03-04 | 2024-03-06 | 2d |  |  | start no earlier than 2024-02-21 | Руководитель проекта; Картридж для принтера [1.25 шт]; Бумага [1.25 шт] | 20h | 20h | 1,230 | 1,154 | 1,230 |
| 9 | 2.7 | Согласование документов с заказчиком |  | 3d | 2024-03-07 A | 2024-03-13 A | 7, 8 | 100% |  | 2024-03-07 | 2024-03-13 | 3d |  |  | start no earlier than 2024-02-27 | Руководитель проекта; Бизнес-аналитик | 32h | 32h | 1,280 | 1,250 | 1,280 |
| 10 | 2.8 | Анализ требований завершен |  | 9d | 2024-03-13 | 2024-03-27 | 9 |  |  | 2024-03-13 | 2024-03-27 | 9d | 87.88d |  |  |  |  |  |  |  |  |
| 11 | 3 | **Разработка ТЗ** |  | 19.88d | 2024-03-27 A | 2024-04-23 |  | 98% | 0.32d | 2024-03-27 | 2024-04-23 | 19.88d | 68d |  |  |  | 240.8h | 237.8h | 8,161 | 7,801 | 8,123.5 |
| 12 | 3.1 | Определение структуры WEB-приложения |  | 10d | 2024-03-27 A | 2024-04-10 A | 10 | 100% |  | 2024-03-27 | 2024-04-05 | 7d |  |  |  | Веб-архитектор | 80h | 80h | 2,000 | 1,640 | 2,000 |
| 13 | 3.2 | Выбор технологий |  | 1d | 2024-04-05 A | 2024-04-05 A | 10 | 100% |  | 2024-04-05 | 2024-04-05 | 1d |  |  | start no earlier than 2024-04-05 | Веб-архитектор [50%] | 4h | 4h | 460 | 460 | 460 |
| 14 | 3.3 | Разработка ТЗ |  | 4d | 2024-04-08 A | 2024-04-11 A | 12, 13 | 100% |  | 2024-04-08 | 2024-04-11 | 4d |  |  |  | Руководитель проекта; Бизнес-аналитик; Веб-архитектор; Бумага [1 шт] | 96h | 96h | 2,944 | 2,944 | 2,944 |
| 15 | 3.4 | Согласование ТЗ с заказчиком |  | 2d | 2024-04-12 A | 2024-04-15 | 14 | 81% | 0.38d | 2024-04-12 | 2024-04-15 | 2d | 74d | 0d |  | Бизнес-аналитик [50%]; Руководитель проекта [50%] | 16h | 13h | 625 | 625 | 587.5 |
| 16 | 3.5 | Разработка ТЗ завершена | milestone | 0d | 2024-04-15 | 2024-04-15 | 15 |  |  | 2024-04-15 | 2024-04-15 | 0d | 74d |  |  |  |  |  |  |  |  |
| 17 | 3.6 | **Создание прототипа** |  | 6d | 2024-04-16 A | 2024-04-23 |  | 99% | 0d | 2024-04-16 | 2024-04-23 | 6d | 68d |  |  |  | 44.8h | 44.8h | 2,132 | 2,132 | 2,132 |
| 18 | 3.6.1 | Создание прототипа |  | 4d | 2024-04-16 A | 2024-04-19 A | 16 | 100% |  | 2024-04-16 | 2024-04-19 | 4d |  |  |  | Веб-архитектор | 32h | 32h | 1,280 | 1,280 | 1,280 |
| 19 | 3.6.2 | Согласование с заказчиком |  | 2d | 2024-04-22 A | 2024-04-23 A | 18 | 100% |  | 2024-04-22 | 2024-04-23 | 2d |  |  |  | Веб-архитектор [40%]; Руководитель проекта [40%] | 12.8h | 12.8h | 852 | 852 | 852 |
| 20 | 3.6.3 | Создание прототипа завершено | milestone | 0d | 2024-04-23 | 2024-04-23 | 19 |  |  | 2024-04-23 | 2024-04-23 | 0d | 68d |  |  |  |  |  |  |  |  |
| 21 | 4 | **Разработка дизайна WEB-приложения** |  | 22.08d | 2024-04-24 A | 2024-05-28 |  | 99% | 0d | 2024-04-24 | 2024-05-27 | 21d | 6.42d |  |  |  | 178h | 178h | 3,352 | 3,281.8 | 3,352 |
| 22 | 4.1 | Разработка макетов страниц |  | 12d | 2024-04-24 A | 2024-05-14 A | 20 | 100% |  | 2024-04-24 | 2024-05-14 | 12d |  |  |  | Дизайнер | 96h | 96h | 1,152 | 1,152 | 1,152 |
| 23 | 4.2 | Согласование макетов с заказчиком |  | 4d | 2024-05-14 A | 2024-05-20 A | 22 | 100% |  | 2024-05-14 | 2024-05-20 | 4d |  |  |  | Руководитель проекта; Дизайнер | 64h | 64h | 1,714 | 1,714 | 1,714 |
| 24 | 4.3 | Доработка макетов |  | 1d | 2024-05-20 A | 2024-05-21 A | 23 | 100% |  | 2024-05-20 | 2024-05-21 | 1d |  |  |  | Дизайнер | 8h | 8h | 96 | 96 | 96 |
| 25 | 4.4 | Утверждение окончательного варианта |  | 2.08d | 2024-05-24 A | 2024-05-28 A | 24FS+3d | 100% |  | 2024-05-24 | 2024-05-27 | 1d |  |  |  | Руководитель проекта [30%]; Дизайнер [30%] | 10h | 10h | 390 | 319.8 | 390 |
| 26 | 4.5 | Разработка дизайна завершена | milestone | 0d | 2024-05-28 | 2024-05-28 | 25 |  |  | 2024-05-27 | 2024-05-27 | 0d | 13.92d | 0d |  |  |  |  |  |  |  |

| ID | WBS | Task | Type | Duration | Start | Finish | Predecessors | Complete | Remaining | Baseline start | Baseline finish | Baseline duration | Total slack | Resources | Work | Actual work | Cost | Baseline cost | Actual cost |
| --- | --- | --- | --- | --- | --- | --- | --- | --- | --- | --- | --- | --- | --- | --- | --- | --- | --- | --- | --- |
| 27 | 5 | **Верстка и программирование** |  | 29d | 2024-05-27 A | 2024-07-05 |  | 84% | 4.7d | 2024-05-27 | 2024-07-05 | 29d | 18d |  | 400h | 340h | 5,542 | 5,138.8 | 4,612 |
| 28 | 5.1 | Разработка клиентской части |  | 16d | 2024-05-27 A | 2024-06-18 A | 26 | 100% |  | 2024-05-27 | 2024-06-18 | 16d |  | Фронтенд-разработчик | 128h | 128h | 1,792 | 1,792 | 1,792 |
| 29 | 5.2 | Разработка серверной части |  | 15d | 2024-05-27 A | 2024-06-17 | 26 | 50% | 7.5d | 2024-05-27 | 2024-06-17 | 15d | 32d | Бэкенд-разработчик; Покупка лицензии на ПО [1 шт] | 120h | 60h | 1,800 | 1,800 | 900 |
| 30 | 5.3 | Подготовка контента и заполнение |  | 4d | 2024-06-18 A | 2024-06-24 A | 28 | 100% |  | 2024-06-18 | 2024-06-24 | 4d |  | Контент-менеджер | 32h | 32h | 256 | 256 | 256 |
| 31 | 5.4 | Тестирование |  | 2d | 2024-06-24 A | 2024-06-26 A | 29, 30 | 100% |  | 2024-06-24 | 2024-06-26 | 2d |  | Тест-инженер | 16h | 16h | 208 | 208 | 208 |
| 32 | 5.5 | Правка кода, устранение сбоев в работе |  | 6.25d | 2024-06-26 A | 2024-07-04 A | 31 | 100% |  | 2024-06-26 | 2024-07-02 | 4d |  | Фронтенд-разработчик [80%]; Бэкенд-разработчик [80%] | 80h | 80h | 1,120 | 716.8 | 1,120 |
| 33 | 5.6 | Интеграция с внешними системами и |  | 3d | 2024-07-02 A | 2024-07-05 A | 32 | 100% |  | 2024-07-02 | 2024-07-05 | 3d |  | Бэкенд-разработчик; Интернет [0.1%] | 24h | 24h | 366 | 366 | 336 |
| 34 | 5.7 | Верстка и программирование завершены | milestone | 0d | 2024-07-05 | 2024-07-05 | 33 |  |  | 2024-07-05 | 2024-07-05 | 0d | 18d |  |  |  |  |  |  |
| 35 | 6 | **Тестирование и отладка WEB-приложения** |  | 13d | 2024-07-05 A | 2024-07-24 |  | 99% | 0d | 2024-07-05 | 2024-07-24 | 13d | 5d |  | 134.4h | 134.4h | 2,042 | 2,042 | 2,042 |
| 36 | 6.1 | Техническое тестирование |  | 2d | 2024-07-05 A | 2024-07-09 A | 34 | 100% |  | 2024-07-05 | 2024-07-09 | 2d |  | Тест-инженер | 16h | 16h | 208 | 208 | 208 |
| 37 | 6.2 | Тестирование на стороне заказчика |  | 4d | 2024-07-09 A | 2024-07-15 A | 36 | 100% |  | 2024-07-09 | 2024-07-15 | 4d |  | Руководитель проекта [20%] | 6.4h | 6.4h | 266 | 266 | 266 |
| 38 | 6.3 | Отладка |  | 7d | 2024-07-15 A | 2024-07-24 A | 37 | 100% |  | 2024-07-15 | 2024-07-24 | 7d |  | Фронтенд-разработчик; Бэкенд-разработчик | 112h | 112h | 1,568 | 1,568 | 1,568 |
| 39 | 6.4 | Тестирование и отладка завершены | milestone | 0d | 2024-07-24 | 2024-07-24 | 38 |  |  | 2024-07-24 | 2024-07-24 | 0d | 5d |  |  |  |  |  |  |
| 40 | 7 | **Внедрение** |  | 5d | 2024-07-24 A | 2024-07-31 |  | 99% | 0d | 2024-07-24 | 2024-07-31 | 5d | 0d |  | 80h | 80h | 2,313 | 2,313 | 2,313 |
| 41 | 7.1 | Перенос на рабочий сервер |  | 2d | 2024-07-24 A | 2024-07-26 A | 39 | 100% |  | 2024-07-24 | 2024-07-26 | 2d |  | Бэкенд-разработчик | 16h | 16h | 224 | 224 | 224 |
| 42 | 7.2 | Формирование отчетности |  | 3d | 2024-07-24 A | 2024-07-29 A | 39 | 100% |  | 2024-07-24 | 2024-07-29 | 3d |  | Руководитель проекта; Бизнес-аналитик; Бумага [1 шт] | 48h | 48h | 1,464 | 1,464 | 1,464 |
| 43 | 7.3 | Передача WEB-приложения заказчику |  | 2d | 2024-07-29 A | 2024-07-31 A | 41, 42 | 100% |  | 2024-07-29 | 2024-07-31 | 2d |  | Руководитель проекта [50%]; Бизнес-аналитик [50%] | 16h | 16h | 625 | 625 | 625 |
| 44 | 7.4 | Внедрение завершено | milestone | 0d | 2024-07-31 | 2024-07-31 | 43 |  |  | 2024-07-31 | 2024-07-31 | 0d | 0d |  |  |  |  |  |  |
| 45 | 7.5 | Проект завершен | milestone | 0d | 2024-07-31 | 2024-07-31 | 44 |  |  | 2024-07-31 | 2024-07-31 | 0d | 0d |  |  |  |  |  |  |
